# Cronograma - Projeto de formatura

Schedule from MS Project, 2010-09-01 to 2010-10-22, 4 hours a day, A marks actual dates.

## Calendars

- Standard: Mon-Thu 18:00-20:30; Fri 14:00-20:30; Sat-Sun off. Exceptions (off unless hours are given): 2010-09-06 (Recesso Escolar (Independência do Brasil)), 2010-10-11 (Recesso Escolar (Nossa Senhora Aparecida)).

## Resources

| Resource |
| --- |
| 4MA Kido |
| 4MA Marcio |

## Schedule

| ID | WBS | Task | Duration | Start | Finish | Predecessors | Complete | Remaining | Total slack | Free slack | Constraint | Deadline | Resources | Work | Actual work |
| --- | --- | --- | --- | --- | --- | --- | --- | --- | --- | --- | --- | --- | --- | --- | --- |
| 1 | 1 | **Projeto de Formatura** | 28.75d | 2010-09-01 A | 2010-10-22 |  | 29% | 20.47d | 0d |  |  |  |  | 364.5h | 43.5h |
| 2 | 1.1 | **Desenvolvimento** | 28.75d | 2010-09-01 A | 2010-10-22 |  | 29% | 20.47d | 0d |  |  | 2010-10-29 |  | 364.5h | 43.5h |
| 3 | 1.1.1 | **Esqueleto da Aplicação** | 19.5d | 2010-09-01 A | 2010-10-05 |  | 68% | 6.16d | -7.59d | 0d |  |  | 4MA Kido | 91.5h | 14.5h |
| 4 | 1.1.1.1 | **Tela de navegação principal** | 1.62d | 2010-09-01 A | 2010-09-03 A |  | 100% |  |  |  |  |  | 4MA Kido | 10.5h | 10.5h |
| 5 | 1.1.1.1.1 | Localização, botão trânsito, menu rotas | 6.5h | 2010-09-01 A | 2010-09-03 A |  | 100% |  |  |  |  |  | 4MA Kido [61.5%] | 4h | 4h |
| 6 | 1.1.1.2 | **Interface de Alertas** | 0.75d | 2010-10-04 | 2010-10-05 |  |  |  | -7.59d | 0d |  |  | 4MA Kido | 3h |  |
| 7 | 1.1.1.2.1 | Célula customizada | 3h | 2010-10-04 | 2010-10-05 |  |  |  | -7.59d | 0d | start no earlier than 2010-10-04 |  | 4MA Kido |  |  |
| 8 | 1.1.2 | **Módulos** | 28.12d | 2010-09-02 A | 2010-10-22 | 3 | 39% | 17.2d | 0d |  |  |  | 4MA Kido | 193h | 21h |
| 9 | 1.1.2.1 | **Mapas** | 5.88d | 2010-09-02 A | 2010-09-13 A | 3 | 100% |  |  |  |  |  | 4MA Kido | 17h | 17h |
| 10 | 1.1.2.1.1 | Estudo e teste do SDK de mapas | 23.5h | 2010-09-02 A | 2010-09-13 A | 3 | 100% |  |  |  |  |  | 4MA Kido [17%] | 4h | 4h |
| 11 | 1.1.2.2 | **Navegação** | 2.75d | 2010-10-05 | 2010-10-08 | 9 |  |  | 0d |  |  |  | 4MA Kido | 22h |  |
| 12 | 1.1.2.2.1 | SDK de mapa - Search | 4h | 2010-10-05 | 2010-10-07 | 9 |  |  | 0d |  |  |  | 4MA Kido | 4h |  |
| 13 | 1.1.2.2.2 | Implementação de Localização Atual | 4h | 2010-10-07 | 2010-10-08 | 12 |  |  | 0d |  |  |  | 4MA Kido | 4h |  |
| 14 | 1.1.2.2.3 | Implementação de Pins Customizados | 3h | 2010-10-08 | 2010-10-08 | 13 |  |  | 0d |  |  |  | 4MA Kido | 3h |  |
| 15 | 1.1.2.3 | **Implementação de colorização customizada de ruas** | 5.5d | 2010-10-08 | 2010-10-20 | 11 |  |  | 0d |  |  |  | 4MA Kido | 44h |  |
| 16 | 1.1.2.3.1 | Estudo sobre a fonte de dados das vias | 2h | 2010-10-08 | 2010-10-12 | 11 |  |  | 0d |  |  |  | 4MA Kido | 2h |  |
| 17 | 1.1.2.3.2 | Implementação de roteamentos | 8h | 2010-10-12 | 2010-10-15 | 16 |  |  | 0d |  |  |  | 4MA Kido | 8h |  |
| 18 | 1.1.2.3.3 | Implementação de Instruções para curva-a-curva | 12h | 2010-10-15 | 2010-10-20 | 17 |  |  | 0d |  |  |  | 4MA Kido | 12h |  |
| 19 | 1.1.2.4 | **Design do Aplicativo** | 1d | 2010-10-20 | 2010-10-22 | 15 |  |  | 0d |  |  |  | 4MA Kido | 8h |  |
| 20 | 1.1.2.4.1 | Desenho dos icones de alerta | 2h | 2010-10-20 | 2010-10-21 | 15 |  |  | 0d |  |  |  | 4MA Kido | 2h |  |
| 21 | 1.1.2.4.2 | Layout para as Telas | 2h | 2010-10-21 | 2010-10-22 | 20 |  |  | 0d |  |  |  | 4MA Kido | 2h |  |
| 22 | 1.1.3 | **Servidor** | 8d | 2010-09-01 A | 2010-09-15 |  | 13% | 7d | 20.75d |  |  |  | 4MA Marcio | 80h | 8h |
| 23 | 1.1.3.1 | Banco de dados | 4h | 2010-09-01 A | 2010-09-02 A |  | 100% |  |  |  |  |  | 4MA Marcio | 4h | 4h |
| 24 | 1.1.3.2 | Parser XML | 12h | 2010-09-03 | 2010-09-09 | 23 |  |  | 20.75d | 0d |  |  | 4MA Marcio | 12h |  |

| ID | WBS | Task | Duration | Start | Finish | Predecessors | Total slack | Free slack | Constraint | Resources | Work |
| --- | --- | --- | --- | --- | --- | --- | --- | --- | --- | --- | --- |
| 25 | 1.1.3.3 | **Estatísticas** | 4d | 2010-09-09 | 2010-09-15 | 24 | 20.75d |  |  | 4MA Marcio | 32h |
| 26 | 1.1.3.3.1 | Mapear pontos críticos | 8h | 2010-09-09 | 2010-09-10 | 24 | 20.75d | 0d |  | 4MA Marcio | 8h |
| 27 | 1.1.3.3.2 | Previsões | 8h | 2010-09-10 | 2010-09-15 | 26 | 20.75d |  |  | 4MA Marcio | 8h |
| 28 | 1.1.4 | **Esqueleto da Aplicação** | 1d | 2010-10-18 | 2010-10-19 |  | 1.38d |  |  |  |  |
| 29 | 1.1.4.1 | **Interface de integrações** | 1d | 2010-10-18 | 2010-10-19 |  | 1.38d |  |  |  |  |
| 30 | 1.1.4.1.1 | Sms | 4h | 2010-10-18 | 2010-10-19 |  | 1.38d |  | start no earlier than 2010-10-18 |  |  |
| 31 | 1.1.4.1.2 | E-mail | 4h | 2010-10-18 | 2010-10-19 |  | 1.38d |  | start no earlier than 2010-10-18 |  |  |
| 32 | 1.1.4.1.3 | Facebook | 4h | 2010-10-18 | 2010-10-19 |  | 1.38d |  | start no earlier than 2010-10-18 |  |  |
| 33 | 1.1.4.1.4 | Campo Texto padrão iPhone | 4h | 2010-10-18 | 2010-10-19 |  | 1.38d |  | start no earlier than 2010-10-18 |  |  |
